# Elserag Project Plan

Schedule from MS Project, 2023-11-01 to 2024-06-23, A marks actual dates.
Elserag Schedule
Elserag as A Literacy Platform for Special Needs

## Calendars

- Standard: Mon-Fri 08:00-12:00, 13:00-17:00; Sat-Sun off. Exceptions (off unless hours are given): 2024-01-21 08:00-12:00, 13:00-17:00, 2024-02-04 08:00-12:00, 13:00-17:00, 2024-06-23 08:00-12:00, 13:00-17:00.

## Resources

| Resource |
| --- |
| Mohamed AbdElrahman Elkhlawy |
| Amina Younis Mohamed |
| Manar Hussein Mohamed |
| Norhan Nageh Alabd |
| Omar Mohamed Elhassan |
| Sara Nabil Kamel |
| Elserag Team |
| Front End Team |
| Back End Team |

## Schedule

| ID | WBS | Task | Type | Duration | Start | Finish | Predecessors | Complete | Constraint | Resources | Work | Actual work |
| --- | --- | --- | --- | --- | --- | --- | --- | --- | --- | --- | --- | --- |
| 1 | 1 | **Part 1: Documentation and Design** |  | 55d | 2023-11-01 A | 2024-01-17 A |  | 100% |  | Elserag Team | 1360h | 1360h |
| 2 | 1.1 | **Gathering Information** |  | 25d | 2023-11-01 A | 2023-12-05 A |  | 100% |  |  | 320h | 320h |
| 3 | 1.1.1 | Research on Disabilities in general |  | 2w | 2023-11-01 A | 2023-11-14 A |  | 100% |  | Elserag Team | 80h | 80h |
| 4 | 1.1.2 | Research on Blindness Disabilitiey |  | 2w | 2023-11-15 A | 2023-11-28 A | 3 | 100% |  | Elserag Team | 80h | 80h |
| 5 | 1.1.3 | **Getting information from Specialized People** |  | 5d | 2023-11-29 A | 2023-12-05 A | 4 | 100% |  |  | 160h | 160h |
| 6 | 1.1.3.1 | Elnour School for Blind People |  | 1w | 2023-11-29 A | 2023-12-05 A |  | 100% |  | Omar Mohamed Elhassan | 40h | 40h |
| 7 | 1.1.3.2 | Elnour and Elamal School |  | 1w | 2023-11-29 A | 2023-12-05 A |  | 100% |  | Amina Younis Mohamed; Manar Hussein Mohamed; Norhan Nageh Alabd | 120h | 120h |
| 8 | 1.2 | Deliver Gathering Information Report | milestone | 0d | 2023-12-06 A | 2023-12-06 A | 2 | 100% |  | Elserag Team |  |  |
| 9 | 1.3 | **Planning** |  | 10d | 2023-12-06 A | 2023-12-19 A | 8 | 100% |  |  | 160h | 160h |
| 10 | 1.3.1 | Define the Project Scope and Objectives |  | 2w | 2023-12-06 A | 2023-12-19 A |  | 100% |  | Elserag Team | 80h | 80h |
| 11 | 1.3.2 | Develop the Project Plan |  | 2w | 2023-12-06 A | 2023-12-19 A |  | 100% |  | Mohamed AbdElrahman Elkhlawy | 80h | 80h |
| 12 | 1.4 | Deliver Planning Report | milestone | 0d | 2023-12-20 A | 2023-12-20 A | 9 | 100% |  | Elserag Team |  |  |
| 13 | 1.5 | Define the Team Skills |  | 1w | 2023-12-20 A | 2023-12-26 A | 9 | 100% |  | Elserag Team | 40h | 40h |
| 14 | 1.6 | Deliver Team Skills Report | milestone | 0d | 2023-12-27 A | 2023-12-27 A | 13 | 100% |  | Elserag Team |  |  |
| 15 | 1.7 | **Define Requirements** |  | 5d | 2023-12-27 A | 2024-01-02 A | 14 | 100% |  | Manar Hussein Mohamed; Norhan Nageh Alabd | 80h | 80h |
| 16 | 1.7.1 | User Requirements |  | 1w | 2023-12-27 A | 2024-01-02 A | 14 | 100% |  |  |  |  |
| 17 | 1.7.2 | Domain Requirements |  | 1w | 2023-12-27 A | 2024-01-02 A | 14 | 100% |  |  |  |  |
| 18 | 1.7.3 | Non-Functional Requirements |  | 1w | 2023-12-27 A | 2024-01-02 A | 14 | 100% |  |  |  |  |
| 19 | 1.8 | Deliver the Requirements Report | milestone | 0d | 2024-01-03 A | 2024-01-03 A | 15 | 100% |  | Elserag Team |  |  |
| 20 | 1.9 | **Design and Prototyping** |  | 10d | 2024-01-03 A | 2024-01-16 A | 19 | 100% |  |  | 320h | 320h |
| 21 | 1.9.1 | Design the UML for the Platform |  | 10d | 2024-01-03 A | 2024-01-16 A | 19 | 100% |  | Mohamed AbdElrahman Elkhlawy; Sara Nabil Kamel | 160h | 160h |
| 22 | 1.9.2 | Create intial design prototypes |  | 10d | 2024-01-03 A | 2024-01-16 A | 19 | 100% |  | Omar Mohamed Elhassan | 80h | 80h |
| 23 | 1.9.3 | Seek feedback from the Target Audience |  | 10d | 2024-01-03 A | 2024-01-16 A | 19 | 100% |  | Elserag Team | 80h | 80h |
| 24 | 1.10 | Deliver the Design Report | milestone | 0d | 2024-01-17 A | 2024-01-17 A | 20 | 100% |  | Elserag Team |  |  |
| 25 | 2 | Deliver and Make Discussion for Part 1 Documentation and Design |  | 1d | 2024-01-21 A | 2024-01-21 A | 1 | 100% | start no earlier than 2024-01-21 | Elserag Team | 8h | 8h |

| ID | WBS | Task | Type | Duration | Start | Finish | Predecessors | Complete | Constraint | Resources | Work | Actual work |
| --- | --- | --- | --- | --- | --- | --- | --- | --- | --- | --- | --- | --- |
| 26 | 3 | **Part 2: Implementation and Documentation** |  | 105d | 2024-01-30 A | 2024-06-21 A |  | 100% |  | Elserag Team | 1920h | 1920h |
| 27 | 3.1 | **Front End Development** |  | 50d | 2024-01-30 A | 2024-04-05 A |  | 100% |  | Front End Team | 400h | 400h |
| 28 | 3.1.1 | Front End Phase 1 |  | 1w | 2024-01-30 A | 2024-02-04 A |  | 100% | finish no earlier than 2024-02-04 |  |  |  |
| 29 | 3.1.2 | Front End Phase 2 |  | 1w | 2024-02-05 A | 2024-02-09 A | 28 | 100% |  |  |  |  |
| 30 | 3.1.3 | Front End Phase 3 |  | 1w | 2024-02-12 A | 2024-02-16 A | 29 | 100% |  |  |  |  |
| 31 | 3.1.4 | Front End Phase 4 |  | 1w | 2024-02-19 A | 2024-02-23 A | 30 | 100% |  |  |  |  |
| 32 | 3.1.5 | Front End Phase 5 |  | 1w | 2024-02-26 A | 2024-03-01 A | 31 | 100% |  |  |  |  |
| 33 | 3.1.6 | Front End Phase 6 |  | 1w | 2024-03-04 A | 2024-03-08 A | 32 | 100% |  |  |  |  |
| 34 | 3.1.7 | Front End Phase 7 |  | 1w | 2024-03-09 A | 2024-03-15 A | 33 | 100% |  |  |  |  |
| 35 | 3.1.8 | Front End Phase 8 |  | 1w | 2024-03-16 A | 2024-03-22 A | 34 | 100% |  |  |  |  |
| 36 | 3.1.9 | Front End Phase 9 |  | 1w | 2024-03-23 A | 2024-03-29 A | 35 | 100% |  |  |  |  |
| 37 | 3.1.10 | Front End Phase 10 |  | 1w | 2024-03-30 A | 2024-04-05 A | 36 | 100% |  |  |  |  |
| 38 | 3.2 | Deliver Front End Report | milestone | 0d | 2024-04-05 A | 2024-04-05 A | 27 | 100% |  | Elserag Team |  |  |
| 39 | 3.3 | **Back End Development** |  | 30d | 2024-04-06 A | 2024-05-17 A |  | 100% |  | Back End Team | 240h | 240h |
| 40 | 3.3.1 | Back End Phase 1 |  | 1w | 2024-04-06 A | 2024-04-12 A | 37 | 100% | start no earlier than 2024-02-01 |  |  |  |
| 41 | 3.3.2 | Back End Phase 2 |  | 1w | 2024-04-13 A | 2024-04-19 A | 40 | 100% | finish no earlier than 2024-02-04 |  |  |  |
| 42 | 3.3.3 | Back End Phase 3 |  | 1w | 2024-04-21 A | 2024-04-26 A | 41 | 100% | finish no earlier than 2024-02-04 |  |  |  |
| 43 | 3.3.4 | Back End Phase 4 |  | 1w | 2024-04-27 A | 2024-05-03 A | 42 | 100% | finish no earlier than 2024-02-04 |  |  |  |
| 44 | 3.3.5 | Back End Phase 5 |  | 1w | 2024-05-04 A | 2024-05-10 A | 43 | 100% | finish no earlier than 2024-02-04 |  |  |  |
| 45 | 3.3.6 | Back End Phase 6 |  | 1w | 2024-05-11 A | 2024-05-17 A | 44 | 100% | finish no earlier than 2024-02-04 |  |  |  |
| 46 | 3.4 | Deliver Back End Report | milestone | 0d | 2024-05-17 A | 2024-05-17 A | 39 | 100% |  | Elserag Team |  |  |
| 47 | 3.5 | Management the Particpation in Hackathon |  | 10d | 2024-02-01 A | 2024-02-13 A |  | 100% | start no earlier than 2024-02-01 | Mohamed AbdElrahman Elkhlawy | 80h | 80h |
| 48 | 3.6 | Deliver Participation in Hackathon Report | milestone | 0d | 2024-02-13 A | 2024-02-13 A | 47 | 100% |  | Elserag Team |  |  |
| 49 | 3.7 | Integration Between Front End and Back End |  | 1mo | 2024-05-20 A | 2024-06-14 A | 39 | 100% |  | Back End Team; Front End Team | 320h | 320h |
| 50 | 3.8 | Deliver Application Integration Report | milestone | 0d | 2024-06-14 A | 2024-06-14 A | 49 | 100% |  | Elserag Team |  |  |
| 51 | 3.9 | Elserag Testing |  | 1w | 2024-06-17 A | 2024-06-21 A | 49 | 100% |  | Elserag Team | 40h | 40h |
| 52 | 3.10 | Deliver Elserag Testing Report | milestone | 0d | 2024-06-21 A | 2024-06-21 A | 51 | 100% |  | Elserag Team |  |  |
| 53 | 4 | Deliver and Make Discussion for Part 2 Implementation and Documentation |  | 1d | 2024-06-23 A | 2024-06-23 A | 26 | 100% | start no earlier than 2024-06-23 | Elserag Team | 8h | 8h |
